# ESTUDIO DE MERCADO

Schedule from MS Project, 2017-04-19 to 2017-11-08, costs in $, A marks actual dates.
Microsoft

## Calendars

- Estándar: Mon-Fri 09:00-13:00, 15:00-19:00; Sat-Sun off.

## Resources

| Resource | Rate |
| --- | --- |
| Susan | 50000 |
| Sebastián | 30000 |
| Andrés | 25000 |
| Jim | 20000 |

## Schedule

| ID | WBS | Task | Duration | Start | Finish | Predecessors | Complete | Remaining | Baseline start | Baseline finish | Baseline duration | Total slack | Free slack | Constraint | Resources | Work | Actual work | Cost | Actual cost |
| --- | --- | --- | --- | --- | --- | --- | --- | --- | --- | --- | --- | --- | --- | --- | --- | --- | --- | --- | --- |
| 1 | 1 | **Estudio de Mercado** | 146d | 2017-04-19 A | 2017-11-08 |  | 26% | 107.95d | 2017-04-19 | 2017-10-31 | 140d | 0d |  |  |  | 1320h | 344h | 46,520,000 | 17,200,000 |
| 2 | 1.1 | **Cuestionario** | 121d | 2017-04-19 A | 2017-10-04 |  | 35% | 78.7d | 2017-04-19 | 2017-09-26 | 115d | 0d |  |  |  | 984h | 344h | 39,120,000 | 17,200,000 |
| 3 | 1.1.1 | **Diseño** | 60d | 2017-04-19 A | 2017-07-11 |  | 72% | 17d | 2017-04-19 | 2017-06-13 | 40d | 56d |  |  |  | 480h | 344h | 24,000,000 | 17,200,000 |
| 4 | 1.1.1.1 | Identificar los consumidores objetivo | 2d | 2017-04-19 A | 2017-04-20 A |  | 100% |  | 2017-04-19 | 2017-04-21 | 3d |  |  |  | Susan | 16h | 16h | 800,000 | 800,000 |
| 5 | 1.1.1.2 | Desarrollar la encuesta preliminar | 11d | 2017-04-21 A | 2017-05-05 A | 4 | 100% |  | 2017-04-24 | 2017-05-05 | 10d |  |  |  | Susan | 88h | 88h | 4,400,000 | 4,400,000 |
| 6 | 1.1.1.3 | Hacer pruebas piloto | 30d | 2017-05-08 A | 2017-06-16 A | 5 | 100% |  | 2017-05-08 | 2017-06-02 | 20d |  |  |  | Susan | 240h | 240h | 12,000,000 | 12,000,000 |
| 7 | 1.1.1.4 | Revisar y ajustar la encuesta | 15d | 2017-06-19 | 2017-07-07 | 6 |  |  | 2017-06-05 | 2017-06-09 | 5d | 0d |  |  | Susan | 120h |  | 6,000,000 |  |
| 8 | 1.1.1.5 | Desarrollar software prueba de datos | 2d | 2017-07-10 | 2017-07-11 | 7 |  |  | 2017-06-12 | 2017-06-13 | 2d | 56d | 0d |  | Susan | 16h |  | 800,000 |  |
| 9 | 1.1.2 | **Respuestas** | 63d | 2017-07-10 | 2017-10-04 |  |  |  | 2017-06-12 | 2017-09-26 | 77d | 0d |  |  |  | 504h |  | 15,120,000 |  |
| 10 | 1.1.2.1 | Verificar los correos | 2d | 2017-07-24 | 2017-07-25 | 7 |  |  | 2017-06-26 | 2017-06-27 | 2d | 0d |  | start no earlier than 2017-06-12 | Sebastián | 16h |  | 480,000 |  |
| 11 | 1.1.2.2 | Imprimir la encuesta | 10d | 2017-07-10 | 2017-07-21 | 7 |  |  | 2017-06-12 | 2017-06-23 | 10d | 2d |  | start no earlier than 2017-06-12 | Sebastián | 80h |  | 2,400,000 |  |
| 12 | 1.1.2.3 | Enviar y esperar las respuestas de la encuesta | 51d | 2017-07-26 | 2017-10-04 | 10, 11, 21 |  |  | 2017-06-28 | 2017-09-26 | 65d | 0d |  | start no earlier than 2017-06-26 | Sebastián | 408h |  | 12,240,000 |  |
| 13 | 1.2 | **Informe** | 88d | 2017-07-10 | 2017-11-08 |  |  |  | 2017-06-12 | 2017-10-31 | 102d | 0d |  |  |  | 336h |  | 7,400,000 |  |
| 14 | 1.2.1 | **Software** | 17d | 2017-07-10 | 2017-08-01 |  |  |  | 2017-06-12 | 2017-07-04 | 17d | 58d |  |  |  | 136h |  | 3,400,000 |  |
| 15 | 1.2.1.1 | Desarrollar software de análisis de los datos | 12d | 2017-07-10 | 2017-08-01 | 7 |  |  | 2017-06-12 | 2017-07-04 | 12d | 71d |  |  | Andrés | 96h |  | 2,400,000 |  |
| 16 | 1.2.1.2 | Probar el software | 5d | 2017-07-12 | 2017-07-18 | 8 |  |  | 2017-06-14 | 2017-06-20 | 5d | 56d |  |  | Andrés | 40h |  | 1,000,000 |  |
| 17 | 1.2.2 | **Informe 2** | 25d | 2017-10-05 | 2017-11-08 |  |  |  | 2017-09-27 | 2017-10-31 | 25d | 0d |  |  |  | 200h |  | 4,000,000 |  |
| 18 | 1.2.2.1 | Tabular los datos | 7d | 2017-10-05 | 2017-10-13 | 16, 12 |  |  | 2017-09-27 | 2017-10-05 | 7d | 0d |  |  | Jim | 56h |  | 1,120,000 |  |
| 19 | 1.2.2.2 | Analizar los resultados | 8d | 2017-10-16 | 2017-10-25 | 18 |  |  | 2017-10-06 | 2017-10-17 | 8d | 0d |  | start no earlier than 2017-09-28 | Jim | 64h |  | 1,280,000 |  |
| 20 | 1.2.2.3 | Hacer informe | 10d | 2017-10-26 | 2017-11-08 | 19 |  |  | 2017-10-18 | 2017-10-31 | 10d | 0d |  | start no earlier than 2017-10-18 | Jim | 80h |  | 1,600,000 |  |
| 21 | 2 | Desarrollar base de datos | 21d | 2017-05-12 | 2017-06-09 |  |  |  |  |  |  | 32d |  | start no earlier than 2017-05-12 | Sebastián | 168h |  | 5,040,000 |  |
